# Проводная система

Schedule from a web Gantt chart, 2024-03-01 to 2024-12-18.
Saturdays and Sundays are off

## Schedule

| ID | WBS | Task | Type | Duration | Start | Finish | Predecessors | Status |
| --- | --- | --- | --- | --- | --- | --- | --- | --- |
| 2 | 1 | **Минимальный набор (MCP, SD, MD, SCI, CP)** |  | 209d | 2024-03-01 | 2024-12-18 |  |  |
| 3 | 1.1 | Испытания по EN54 в РФ (климатика, эмс, вибро, коррозия) |  | 43d | 2024-03-01 | 2024-04-30 |  |  |
| 4 | 1.2 | Анализ результатов испытаний в РФ | fixed start | 1d | 2024-05-01 | 2024-05-01 | 3 | waiting |
| 5 | 1.3 | Внесение доработок |  | 15d | 2024-05-02 | 2024-05-22 | 4 | waiting |
| 6 | 1.4 | Заказ образцов для повторных тестов |  | 10d | 2024-05-23 | 2024-06-05 | 5 | waiting |
| 7 | 1.5 | Повторные испытания в РФ |  | 15d | 2024-06-06 | 2024-06-26 | 6 | waiting |
| 8 | 1.6 | Заказ и сборка партии к отправки в ОАЭ |  | 30d | 2024-06-27 | 2024-08-07 | 7 | waiting |
| 9 | 1.7 | Логистика МСК-ОАЭ-Польша |  | 15d | 2024-08-08 | 2024-08-28 | 8 | waiting |
| 10 | 1.8 | Сертификация |  | 80d | 2024-08-29 | 2024-12-18 | 9 | waiting |
| 11 | 1.9 | Заказ и сборка партии к отправке в ОАЭ |  | 10d | 2024-05-02 | 2024-05-15 | 4 | waiting |
| 12 | 1.10 | Логистика МСК-ОАЭ-Польша |  | 15d | 2024-05-16 | 2024-06-05 | 11 | waiting |
| 13 | 1.11 | Сертификация |  | 80d | 2024-06-06 | 2024-09-25 | 12 | waiting |
| 14 | 2 | **Остальные устройства** |  | 1d | 2024-03-01 | 2024-03-01 |  |  |
| 15 | 2.1 | Испытания по EN54 в РФ (климатика, эмс, вибро, коррозия) |  | 1d | 2024-03-01 | 2024-03-01 |  |  |
| 16 | 2.2 | Анализ результатов испытаний в РФ |  | 1d | 2024-03-01 | 2024-03-01 |  |  |
